# Construction schedule v1.0

Schedule from an IFC model, 2026-11-02 to 2027-11-08.
Carport HW - Rev1 through first mass-production shipment release

## Schedule

| ID | Activity | Type | Duration | Start | Finish | Predecessors | Planned start | Planned finish | Total float | Free float |
| --- | --- | --- | --- | --- | --- | --- | --- | --- | --- | --- |
| 1 | **01 - Current position and program decisions** |  | 25d | 2026-11-02 | 2026-12-04 |  | 2026-11-02 | 2026-11-02 | 2d | 0d |
| 1.1 | Planning start - Rev0 complete; Rev1 schematic in review and layout underway | milestone | 0d | 2026-11-02 | 2026-11-02 |  |  |  | 2d | 0d |
| 1.2 | Confirm US/Canada launch requirements and installation envelope |  | 5d | 2026-11-02 | 2026-11-06 | 1.1 |  |  | 2d | 0d |
| 1.3 | Agree certification and qualification matrix with accredited lab |  | 10d | 2026-11-09 | 2026-11-20 | 1.2 | 2026-11-02 | 2026-11-13 | 12d | 0d |
| 1.4 | Select overseas build partners and reserve indicative capacity |  | 10d | 2026-11-09 | 2026-11-20 | 1.2 | 2026-11-02 | 2026-11-13 | 12d | 0d |
| 1.5 | Approve sample allocation and destructive-test budgets |  | 5d | 2026-11-23 | 2026-11-27 | 1.3, 1.4 | 2026-11-02 | 2026-11-06 | 12d | 0d |
| 1.6 | Evaluate physical SIM / eUICC provider and roaming |  | 15d | 2026-11-09 | 2026-11-27 | 1.2 | 2026-11-02 | 2026-11-20 | 39d | 38d |
| 1.7 | Evaluate nRF9151 satellite service and supported hardware/firmware |  | 20d | 2026-11-09 | 2026-12-04 | 1.2 | 2026-11-02 | 2026-11-27 | 34d | 33d |
| 1.8 | G0 - Requirements, test strategy and supplier assumptions accepted | milestone | 0d | 2026-11-27 | 2026-11-27 | 1.3, 1.4, 1.5 | 2026-11-02 | 2026-11-02 | 39d | 38d |
| 2 | **02 - Rev1 PCB and prototype housing release** |  | 25d | 2026-11-09 | 2026-12-11 |  | 2026-11-02 | 2026-11-02 | 2d | 0d |
| 2.1 | Close Rev1 schematic review and BOM metadata |  | 7d | 2026-11-09 | 2026-11-17 | 1.2 | 2026-11-02 | 2026-11-10 | 5d | 0d |
| 2.2 | Bound Rev1 input fault stresses before destructive testing |  | 10d | 2026-11-09 | 2026-11-20 | 1.2 | 2026-11-02 | 2026-11-13 | 2d | 0d |
| 2.3 | Complete Rev1 routing and RF / power / mechanical review |  | 10d | 2026-11-23 | 2026-12-04 | 2.1, 2.2 | 2026-11-02 | 2026-11-13 | 2d | 0d |
| 2.4 | Rev1 PCBA DFM, AVL availability and release package |  | 5d | 2026-12-07 | 2026-12-11 | 2.3, 1.4 | 2026-11-02 | 2026-11-06 | 2d | 0d |
| 2.5 | G1 - Release Rev1 PCBA prototype run | milestone | 0d | 2026-12-11 | 2026-12-11 | 2.4 | 2026-11-02 | 2026-11-02 | 2d | 0d |
| 2.6 | Design clamshell and interfaces for prototype manufacture |  | 10d | 2026-11-09 | 2026-11-20 | 1.2 | 2026-11-02 | 2026-11-13 | 19d | 0d |
| 2.7 | Select humidity vent and MEMS acoustic membrane stacks |  | 10d | 2026-11-09 | 2026-11-20 | 1.2 | 2026-11-02 | 2026-11-13 | 19d | 0d |
| 2.8 | Print housing variants and hand-build membrane/grill/pigtail prototypes |  | 10d | 2026-11-23 | 2026-12-04 | 2.6, 2.7 | 2026-11-02 | 2026-11-13 | 19d | 0d |
| 2.9 | Evaluate printed enclosure fit, acoustic/RH and cable interfaces |  | 5d | 2026-12-07 | 2026-12-11 | 2.8, 2.3 | 2026-11-02 | 2026-11-06 | 19d | 18d |
| 3 | **03 - Rev1 EVT build and integrated learning** |  | 46d | 2026-11-18 | 2027-01-29 |  | 2026-11-02 | 2026-11-02 | 1d | 0d |
| 3.1 | Fabricate and assemble Rev1 engineering boards |  | 15d | 2026-12-14 | 2027-01-04 | 2.5, 1.5 | 2026-11-02 | 2026-11-20 | 2d | 0d |
| 3.2 | Rev1 board shipment, import and incoming inspection |  | 5d | 2027-01-05 | 2027-01-09 | 3.1 | 2026-11-02 | 2026-11-06 | 2d | 0d |
| 3.3 | External gate - Rev1 bring-up firmware and diagnostic tools |  | 15d | 2026-11-18 | 2026-12-08 | 2.1 | 2026-11-02 | 2026-11-20 | 17d | 16d |
| 3.4 | Bring up Rev1 PCBA with current-limited staged power |  | 5d | 2027-01-11 | 2027-01-15 | 3.2, 3.3 | 2026-11-02 | 2026-11-06 | 1d | 0d |
| 3.5 | Rev1 power, input fault screening and radio transient tests |  | 10d | 2027-01-18 | 2027-01-29 | 3.4, 2.2 | 2026-11-02 | 2026-11-13 | 1d | 0d |
| 3.6 | Rev1 antenna, coexistence and EMC pre-scan |  | 10d | 2027-01-18 | 2027-01-29 | 3.4, 2.9 | 2026-11-02 | 2026-11-13 | 1d | 0d |
| 3.7 | Rev1 integrated membrane, housing and sensor experiments |  | 10d | 2027-01-18 | 2027-01-29 | 3.4, 2.9 | 2026-11-02 | 2026-11-13 | 1d | 0d |
| 3.8 | G2 - Rev1 EVT findings and Rev2 change list approved | milestone | 0d | 2027-01-29 | 2027-01-29 | 3.5, 3.6, 3.7, 1.8 | 2026-11-02 | 2026-11-02 | 1d | 0d |

Notes:
- 1.1: Status supplied 2026-10-31. Historical completion dates and percent complete are unknown; this is a planning anchor, not the actual Rev0 completion date.
- 1.2: Approved requirements: intended install location; 12 V baseline versus 24 V requirement; temperature, humidity, ingress, acoustic, GNSS, antenna, vehicle mounting, safe behavior and operating/survival power envelope. US + Canada launch confirmed; other markets are later change-controlled scope.
- 1.3: Written US FCC / Canada ISED route, exact ESP32 and nRF module grants/integration conditions, antennas and gains, RF exposure/use distance and simultaneous transmit cases; host emissions, GNSS receive performance, cellular/operator and Bluetooth qualification scope. Evaluate safety/battery/shipping and vehicle approval applicability. Lab quote, sample counts, modes and slot strategy recorded.
- 1.4: PCBA, mold/assembly and membrane/cable vendors shortlisted; quotes, Incoterms, import responsibility, tooling ownership, payment/release gates, English controlled drawings, weekly overlap meeting and change approval process. Lead times remain estimates until supplier commits. Confirm actual holidays/country.
- 1.5: Allocate serialized boards/housings by test; suggested Rev1 15 boards, Rev2 30 boards, T1 20 sets, T2 60 sets, PVT 100 units subject to lab needs, destructive tests, spares, budget and demand. Counts are proposals, not purchase authorizations.
- 1.6: Provider comparison covers US/Canada LTE-M/NB-IoT coverage, roaming/permanent roaming, PSM/eDRX, APN, activation, provisioning, supply/form factor, profile lifecycle, cost and operator approvals. Bench attach evidence and fallback physical SIM choice. Do not assume eSIM is merely a socket substitution.
- 1.7: Check actual nRF9151 build code, compatible NTN modem/NCS release, provider service/bands/coverage, antenna/sky view, TN/NTN transitions, SIM profile, power budget, test access and approval route. Record working eval evidence or remaining gaps; not yet a launch promise.
- 1.8: Requirements, launch markets, qualification plan, sample budget and accountable role assignments accepted. Named owners and capacity still to be assigned.
- 2.1: Resolve reviewer comments and R2-03 MPN/tolerance/voltage/dielectric metadata; regenerate correct dev/production variants, BOM and netlist; run Altium compiler/ERC; unresolved risks have written containment. Saved source, reviewed PDF and exports agree.
- 2.2: Declare reverse battery, jump start, crank, pulse/load dump and USB overlap envelopes. Close R2-04 reverse comparator-pin injection allowance and transient peak/terminal stresses, or implement safe changes/bench containment. Static simulation alone is not fault qualification.
- 2.3: Layout review checks switcher hot loops, return paths, antenna keep-outs/feed/matching, GNSS isolation, debug/test access, thermal copper, USB, pigtail, button/LED alignment, board outline and tolerances. DRC and 3D clearance review pass.
- 2.4: CM acknowledges controlled fabrication/assembly package, stackup, impedance, stencil, polarity, firmware/debug access, approved substitutions, DNP variants and long-lead material status. Do not treat old exports as current production files.
- 2.5: Signed Rev1 build release; quote and proposed lot approved; Rev1 is an engineering prototype with fault-test restrictions documented.
- 2.6: Two plastic shell halves; fastening/seal strategy, wall/rib/draft and tool parting concept. USB access/sealing, power pigtail strain-relief and pull load path, user button/RGB light path, ESP32 reset/boot and nRF reset access, mounting and antenna clearances are defined.
- 2.7: Evaluate ePTFE humidity exchange and acoustic vent separately: RH response, mic insertion loss/bandwidth, cavity geometry, adhesives, supported bond land, contamination/condensation, grill/screen protection and material compatibility. Sharing a port requires evidence; vent rating is not whole-product IP certification.
- 2.8: Printed shell fits and hand-applied ePTFE, screen/grill, light pipe, seals and strain relief available; build record captures orientation/material/adhesive/cure. Include vent-only coupons and cable pull fixtures.
- 2.9: Fit real board or verified dimensional surrogate; test button/LED/dev access, USB insertion, pigtail pull/bend, grille damage, mic response/RH lag and condensation. Printed/handmade performance is screening evidence, not molded-process qualification.
- 3.1: CM assembly report, AOI/X-ray where appropriate, component traceability, serial numbers and approved substitutions; staged release of first boards if feasible.
- 3.2: Air shipment received with customs paperwork, count and visual inspection; shipping damage and build discrepancies logged.
- 3.3: Versioned Rev1 pin map, flash/storage change, sensor addressing, charger source policy, USB-only latch-off recovery, rail sequencing/back-power prevention, fuel-gauge configuration and diagnostic capture ready. Dashboard/carportpy/proto compatible. Deliverables managed in software backlogs.
- 3.4: Supply currents/rails verified before radios; USB enumeration, debug recovery, sensor/mic/button/RGB, flash, reset/boot and UART tested. Record boot firmware, serial and measurement setup.
- 3.5: Measure reverse/positive stress within declared envelope, brownout and crank recovery, USB-only/battery absent/depleted modes, charge/source limits after reset, 3.2 V radio droop, thermal/efficiency and sleep draw; no unresolved unsafe stress. Destructive tests use allocated units.
- 3.6: In representative enclosure/cabling, assess BLE/Wi-Fi/cellular transmit and GNSS receive sensitivity/TTFF, coexistence/desense and switcher noise; bench/conducted checks plus radiated pre-scan; antenna candidates, retuning needs and lab modes documented.
- 3.7: RH step response/hysteresis, thermal self-heating, acoustic response/noise, condensation/ingress screening and cable pull/bend. Confirm antenna placement, button feel/light visibility and development button access on actual assembly.
- 3.8: Issue log contains root cause, severity, evidence and Rev2 disposition; power/RF/mechanical feasibility demonstrated. No automatic pass because boards powered up.

| ID | Activity | Type | Duration | Start | Finish | Predecessors | Planned start | Planned finish | Total float | Free float |
| --- | --- | --- | --- | --- | --- | --- | --- | --- | --- | --- |
| 4 | **04 - Rev2 and tool-ready design freeze** |  | 20d | 2027-01-29 | 2027-03-01 |  | 2026-11-02 | 2026-11-02 | 1d | 0d |
| 4.1 | G3a - Cellular SIM and satellite launch decision | milestone | 0d | 2027-01-29 | 2027-01-29 | 1.6, 1.7, 3.8 | 2026-11-02 | 2026-11-02 | 1d | 0d |
| 4.2 | Rev2 electrical changes, worst-case closure and schematic review |  | 10d | 2027-02-01 | 2027-02-12 | 3.8, 4.1 | 2026-11-02 | 2026-11-13 | 1d | 0d |
| 4.3 | Rev2 layout, RF and DFM review |  | 10d | 2027-02-16 | 2027-03-01 | 4.2 | 2026-11-02 | 2026-11-13 | 1d | 0d |
| 4.4 | Tool-ready enclosure, vent process and cable assembly DFM |  | 10d | 2027-02-01 | 2027-02-12 | 3.8, 4.1 | 2026-11-02 | 2026-11-13 | 6d | 0d |
| 4.5 | Cross-discipline design risk and verification review |  | 5d | 2027-02-16 | 2027-02-22 | 4.2, 4.4 | 2026-11-02 | 2026-11-06 | 6d | 5d |
| 4.6 | Approve mold design, tooling contract and trial plan |  | 5d | 2027-02-22 | 2027-02-26 | 4.4, 1.4 | 2026-11-02 | 2026-11-06 | 2d | 1d |
| 4.7 | G3 - Release Rev2 PCBA and housing tooling | milestone | 0d | 2027-03-01 | 2027-03-01 | 4.3, 4.6, 4.5, 1.3 | 2026-11-02 | 2026-11-02 | 1d | 0d |
| 5 | **05 - Rev2 / T1 first molded integration** |  | 43d | 2027-03-02 | 2027-04-30 |  | 2026-11-02 | 2026-11-02 | 0d |  |
| 5.1 | Build Rev2 production-intent boards |  | 15d | 2027-03-02 | 2027-03-22 | 4.7 | 2026-11-02 | 2026-11-20 | 1d | 0d |
| 5.2 | Ship and inspect Rev2 boards |  | 5d | 2027-03-23 | 2027-03-27 | 5.1 | 2026-11-02 | 2026-11-06 | 1d | 0d |
| 5.3 | External gate - Rev2 DVT and RF test firmware |  | 15d | 2027-03-02 | 2027-03-22 | 4.7 | 2026-11-02 | 2026-11-20 | 3d | 0d |
| 5.4 | Validate Rev2 electrical fixes before enclosed DVT |  | 10d | 2027-03-29 | 2027-04-09 | 5.2, 5.3 | 2026-11-02 | 2026-11-13 | 0d |  |
| 5.5 | T1 - Cut clamshell and included strain-relief tooling |  | 20d | 2027-03-02 | 2027-03-29 | 4.7 | 2026-11-02 | 2026-11-27 | 1d | 0d |
| 5.6 | T1 - First shots, supplier metrology and assembly samples |  | 5d | 2027-03-30 | 2027-04-05 | 5.5 | 2026-11-02 | 2026-11-06 | 1d | 0d |
| 5.7 | T1 - Air shipment and incoming sample inspection |  | 5d | 2027-04-06 | 2027-04-10 | 5.6 | 2026-11-02 | 2026-11-06 | 1d | 0d |
| 5.8 | T1 - Mechanical and electrical assembly evaluation |  | 5d | 2027-04-12 | 2027-04-16 | 5.7, 5.4 | 2026-11-02 | 2026-11-06 | 0d |  |
| 5.9 | G4 - T1 integrated evaluation and correction list accepted | milestone | 0d | 2027-04-16 | 2027-04-16 | 5.8 | 2026-11-02 | 2026-11-02 | 10d |  |
| 5.10 | Production-intent Rev2 / T1 EMC and RF readiness pre-scan |  | 10d | 2027-04-19 | 2027-04-30 | 5.8, 1.3 | 2026-11-02 | 2026-11-13 | 0d |  |
| 6 | **06 - T2 correction and preproduction validation** |  | 29d | 2027-05-03 | 2027-06-11 |  | 2026-11-02 | 2026-11-02 | 0d |  |
| 6.1 | Freeze T2 correction package and final test limits |  | 5d | 2027-05-03 | 2027-05-07 | 5.9, 5.10 | 2026-11-02 | 2026-11-06 | 0d |  |
| 6.2 | T2 - Tool corrections and process adjustments |  | 10d | 2027-05-10 | 2027-05-21 | 6.1 | 2026-11-02 | 2026-11-13 | 0d |  |
| 6.3 | T2 - Repeat trial and supplier first-article inspection |  | 2d | 2027-05-24 | 2027-05-25 | 6.2 | 2026-11-02 | 2026-11-03 | 0d |  |
| 6.4 | T2 - Air shipment and incoming inspection |  | 5d | 2027-05-26 | 2027-05-30 | 6.3 | 2026-11-02 | 2026-11-06 | 0d |  |
| 6.5 | T2 - Integrated mechanical and electrical evaluation |  | 10d | 2027-05-31 | 2027-06-11 | 6.4 | 2026-11-02 | 2026-11-13 | 0d |  |
| 6.6 | G5 - T2 preproduction candidate accepted | milestone | 0d | 2027-06-11 | 2027-06-11 | 6.5 | 2026-11-02 | 2026-11-02 | 0d |  |

Notes:
- 4.1: Select provider/form factor and antenna/band plan. NTN either included with supported build/firmware/service and certification budget, or deferred with feature disabled and excluded from launch claims. Unresolved NTN requirement holds Rev2 freeze; no implicit terrestrial-only waiver.
- 4.2: Rev2 closes EVT defects, input protection and power margins, selected connectivity/SIM, release variant and test access; tolerance/temperature/DC bias calculations, reviewed schematic and BOM signed.
- 4.3: Production-intent outline, stackup, antenna matching/keep-outs, switcher layout, cable interfaces and fixtures reviewed; DRC/ERC and CM DFM accepted. No speculative changes after freeze without ECO.
- 4.4: Production resin, surface/texture, shrink/tolerances, fastening, draft/parting/ejection, undercuts, gasket, pigtail molding or grommet strategy, USB sealing, membrane bond lands and grill process finalized. Humidity and acoustic stack validated; tooling scope includes any separate strain-relief/insert tools.
- 4.5: DFMEA and DVP&R link failures to tests: water paths, membrane detachment/blockage, cable pull, user interface, thermal, battery, radio, vehicle transients and recovery; test severities and quantitative pass limits signed before formal runs.
- 4.6: Supplier confirms T1/T2 definitions, cavities, tool steel/life/ownership, resin, inspection points, trial videos/data, samples, ECO turnaround, capacity, shipping and holiday calendar. Texture/irreversible steel changes held until fit acceptance.
- 4.7: Controlled Rev2 electrical and mechanical release and PO approval. Freeze intended antennas, cables, resin, SIM/service scope and certification configuration. Long-lead commitments explicitly approved by operator.
- 5.1: Controlled Rev2 lot with serial/lot traceability, inspection and approved exact BOM; proposed 30 boards sized to qualification plan.
- 5.2: Received boards match released configuration and allocation; incoming results logged.
- 5.3: Pinned ESP32/nRF/modem/NCS versions, Rev2 hardware profile, production-intent power policy, logging and RF test modes; shared contracts/protobuf and dashboard/carportpy compatibility matrix. NTN launch decision implemented. Separate software backlog owns development.
- 5.4: Repeat affected power/fault tests, flash/debug recovery, supply margin and radio/sensor checks; compare Rev1 findings and confirm final component variants. Newly discovered Rev3 requirement is an ECO and schedule replan, not hidden rework.
- 5.5: Mold progress evidence and tool acceptance checkpoints; approved resin and inserts available. This is 20 supplier working days, excluding provisional closure; no claim that all overseas vendors meet it.
- 5.6: As-molded samples from intended resin, cavity IDs, molding parameters, dimensional FAI and cosmetic/warp/sink observations; fit PCB and pigtail locally before sending samples. Proposed 20 sets plus membrane coupons.
- 5.7: Samples and FAI received with revision/cavity traceability; retain supplier reference set.
- 5.8: Evaluate tolerances, fasteners, seam/USB/pigtail, pull/bend, button/RGB/dev access, vent/grill assembly, mic/RH and final antenna behavior with Rev2. Collect change list before tool correction release; first molded parts are not preproduction approval.
- 5.9: T1 loop target 6-8 weeks after freeze without supplier closure; baseline uses 20 + 5 supplier workdays, 5 calendar days transit and 5 engineering workdays evaluation. Electrical availability may drive later finish; holiday impact is explicit in supplier calendar.
- 5.10: Representative molded enclosure, antennas and cables pass readiness scans and coexistence/GNSS checks; host exposure and module integration assessment updated; any hardware changes enter T2 correction list.
- 6.1: Signed tool/assembly correction list and required electrical ECO. Baseline assumes minor corrections, no PCB respin or new mold. Major changes trigger explicit additional loop and renewed certification impact review.
- 6.2: Steel-safe corrections, approved finish/texture, vent application fixture and cure, grill retention, cable strain relief and sealing process incorporated; updated controlled drawing and inspection plan.
- 6.3: Final resin/cavity/process samples and dimensional FAI accepted for dispatch; proposed 60 assemblies covers lab/qualification plus spares. Supplier trial uses factory working days, with no assumed weekend overtime.
- 6.4: Final T2 samples and FAI received with revision/cavity/lot traceability; incoming damage/count checks complete.
- 6.5: Repeat affected dimensional, sealing/cable, thermal, mic/RH, RF/GNSS and power tests. Final resin/adhesive/cable/antenna/PCB/firmware configuration logged. Manufacturing repeatability compared across cavities/builds.
- 6.6: T2 loop target 4-6 weeks from correction release excluding preceding change review; baseline 10 supplier workdays correction + 2 supplier workdays trial + 5 calendar days shipping + 10 engineering workdays evaluation. Candidate accepted for formal qualification/certification; MP still requires later gates.

| ID | Activity | Type | Duration | Start | Finish | Predecessors | Planned start | Planned finish | Total float | Free float |
| --- | --- | --- | --- | --- | --- | --- | --- | --- | --- | --- |
| 7 | **07 - Formal qualification and US/Canada market access** |  | 112d | 2027-03-02 | 2027-08-10 |  | 2026-11-02 | 2026-11-02 | 0d |  |
| 7.1 | Confirm lab bookings, sample matrix and regulatory configuration |  | 5d | 2027-03-02 | 2027-03-08 | 4.7, 1.3 | 2026-11-02 | 2026-11-06 | 67d |  |
| 7.2 | Formal vehicle electrical / ESD qualification |  | 10d | 2027-06-14 | 2027-06-25 | 6.6, 7.1 | 2026-11-02 | 2026-11-13 | 20d |  |
| 7.3 | Formal enclosure, environmental and cable qualification |  | 20d | 2027-06-14 | 2027-07-12 | 6.6, 7.1 | 2026-11-02 | 2026-11-27 | 10d |  |
| 7.4 | US FCC / Canada ISED host RF, emissions and exposure assessment |  | 30d | 2027-06-14 | 2027-07-26 | 6.6, 7.1, 5.3 | 2026-11-02 | 2026-12-11 | 0d |  |
| 7.5 | Cellular/operator and conditional NTN acceptance |  | 30d | 2027-06-14 | 2027-07-26 | 6.6, 4.1, 7.1 | 2026-11-02 | 2026-12-11 | 0d |  |
| 7.6 | Complete Bluetooth product qualification |  | 10d | 2027-06-14 | 2027-06-25 | 6.6, 5.3 | 2026-11-02 | 2026-11-13 | 20d |  |
| 7.7 | Battery, transport, material and product safety documentation |  | 15d | 2027-06-14 | 2027-07-05 | 6.6 | 2026-11-02 | 2026-11-20 | 15d |  |
| 7.8 | Approve final labels, installation instructions and compliance file |  | 10d | 2027-07-27 | 2027-08-10 | 7.4, 7.5, 7.6, 7.7 | 2026-11-02 | 2026-11-13 | 0d |  |
| 7.9 | Visible qualification / lab retest contingency |  | 10d | 2027-07-27 | 2027-08-10 | 7.4, 7.5, 7.2, 7.3, 7.7 | 2026-11-02 | 2026-11-13 | 0d |  |
| 7.10 | G6 - Qualification and US/Canada release evidence accepted | milestone | 0d | 2027-08-10 | 2027-08-10 | 7.8, 7.9, 7.6 | 2026-11-02 | 2026-11-02 | 0d |  |
| 8 | **08 - Manufacturing system and software handoff gates** |  | 112d | 2027-03-02 | 2027-08-10 |  | 2026-11-02 | 2026-11-02 | 0d |  |
| 8.1 | Design production programming and end-of-line fixtures |  | 10d | 2027-03-02 | 2027-03-15 | 4.7, 1.5 | 2026-11-02 | 2026-11-13 | 72d | 5d |
| 8.2 | Build and correlate fixtures with golden/reference units |  | 15d | 2027-04-12 | 2027-04-30 | 8.1, 5.4 | 2026-11-02 | 2026-11-20 | 58d | 29d |
| 8.3 | External gate - Factory firmware, provisioning and test tools |  | 20d | 2027-03-23 | 2027-04-20 | 5.3, 8.1 | 2026-11-02 | 2026-11-27 | 67d | 37d |
| 8.4 | External gate - Integrated product release candidate |  | 30d | 2027-03-23 | 2027-05-04 | 5.3, 4.1 | 2026-11-02 | 2026-12-11 | 67d |  |
| 8.5 | Create assembly SOPs, quality control and training package |  | 10d | 2027-06-14 | 2027-06-25 | 6.6, 8.2, 8.3 | 2026-11-02 | 2026-11-13 | 30d |  |
| 8.6 | Approve production material availability and logistics plan |  | 20d | 2027-06-14 | 2027-07-09 | 6.6, 1.4, 4.1 | 2026-11-02 | 2026-11-27 | 22d | 21d |
| 8.7 | G7 - Controlled pilot build readiness | milestone | 0d | 2027-08-10 | 2027-08-10 | 8.5, 8.6, 8.2, 8.3, 8.4, 7.10 | 2026-11-02 | 2026-11-02 | 0d |  |
| 9 | **09 - Pilot, production release and ramp** |  | 62d | 2027-08-11 | 2027-11-08 |  | 2026-11-02 | 2026-11-02 | 0d |  |
| 9.1 | Run PVT pilot on intended overseas production line |  | 10d | 2027-08-11 | 2027-08-24 | 8.7 | 2026-11-02 | 2026-11-13 | 0d |  |
| 9.2 | Ship pilot units and verify receiving / fulfillment process |  | 5d | 2027-08-25 | 2027-08-29 | 9.1 | 2026-11-02 | 2026-11-06 | 0d |  |
| 9.3 | Supervised US/Canada vehicle pilot and soak |  | 15d | 2027-08-30 | 2027-09-20 | 9.2 | 2026-11-02 | 2026-11-20 | 0d |  |
| 9.4 | Close pilot defects and approve yield / quality evidence |  | 5d | 2027-09-21 | 2027-09-27 | 9.3 | 2026-11-02 | 2026-11-06 | 0d |  |
| 9.5 | G8 - Authorize mass production release | milestone | 0d | 2027-09-27 | 2027-09-27 | 9.4, 7.10 | 2026-11-02 | 2026-11-02 | 0d |  |
| 9.6 | Build first mass-production lot and controlled ramp |  | 20d | 2027-09-28 | 2027-11-01 | 9.5 | 2026-11-02 | 2026-11-27 | 0d |  |
| 9.7 | First MP lot outgoing audit and shipment release |  | 5d | 2027-11-02 | 2027-11-08 | 9.6 | 2026-11-02 | 2026-11-06 | 0d |  |
| 9.8 | G9 - First mass-production lot ready to ship | milestone | 0d | 2027-11-08 | 2027-11-08 | 9.7 | 2026-11-02 | 2026-11-02 | 0d |  |

Notes:
- 7.1: Lab slots quoted/confirmed for forecast T2 availability with change policy; exact grant IDs, antennas, firmware/RF modes, accessory/cable variants and sample count documented. Schedule is not evidence a booking already exists.
- 7.2: Execute signed installation-specific DVP&R: ISO 7637-2 transient and ISO 16750-2 electrical load categories as applicable, reverse battery, crank, jump start, load dump, hot plug, shorts, USB/source combinations and ESD (ISO 10605/IEC 61000-4-2 as scoped). Verify function/recovery and post-test leakage. No blanket automotive-certified claim.
- 7.3: Run approved temperature/humidity/condensation, thermal cycle, vibration/shock/drop, ingress target, fluid/UV where installation requires, pigtail pull/flex, connector/button cycles and membrane/grill adhesion/contamination. Acoustic and RH checks before/after; confirm full-assembly ingress. Long-duration aging beyond this window adds explicit time.
- 7.4: Final configuration tested/assessed against applicable rules and module grant restrictions, radio bands, Wi-Fi/BLE/cellular combinations, antenna/cable changes, RF exposure, host emissions and labels/user notices. Determine whether filings/permissive changes/new certification are needed; obtain written conclusion and reports.
- 7.5: Document PTCRB IoT/other applicable route and each selected carrier acceptance; supported module/modem and antenna configuration, OTA RF performance and SIM lifecycle proven. If NTN launches, provider/network approval evidence included; if deferred, disabled-build verification and no launch claim documented.
- 7.6: Company membership, qualified-design reuse/testing route, product identity and submission complete; retain product qualification record before market distribution.
- 7.7: Confirm actual cell/pack chemistry/configuration and applicable safety evaluation, protection/charging temperature behavior; UN 38.3 test summary for shipped lithium configuration and packaging requirements where applicable, supplier safety files, resin flammability and material declarations. New/modified pack testing requires a separate quoted loop; module approvals do not cover this.
- 7.8: US/Canada applicable IDs and host labeling, bilingual Canadian notices where required, antenna/install separation and allowed environment/power ratings, approved accessory list, SIM/provider configuration and traceable reports. Assess other markets afresh for expansion.
- 7.9: Reserved capacity for one minor corrective/retest cycle. Major hardware, antenna, resin, battery or NTN-route change requires a new estimate; this reserve does not prove an approval.
- 7.10: Signed qualification reports and required authorizations/acceptances complete for the exact sale configuration; unresolved deviations closed or formally limited before any customer distribution. NTN inclusion/deferment is explicit.
- 8.1: Fixture design covers protected power, contact access, ESP32 USB/UART and nRF SWD/modem programming, serial/MAC/IMEI/SIM association, rail/current tests, radio/GNSS checks, sensor/mic/RH, buttons/RGB and leak/vent tests where appropriate. Throughput and calibration/reference strategy defined.
- 8.2: Fixtures delivered, limits derived from qualification, reference/failing-unit studies demonstrate detection, gauge repeatability assessed and station/firmware logs retained. Destructive qualification and end-of-line screens have distinct coverage.
- 8.3: Versioned manufacturing images, RF test modes, locked test protocols, fixture automation/dashboard diagnostics, protected factory identity flow, authorized provisioning and serial/IMEI/SIM records; pass/fail output schema and calibration persistence. No private keys or credentials in build package/logs.
- 8.4: Versioned ESP32/nRF/shared/protobuf, mobile tools/onboarding/OTA, dashboard and AWS contracts pass cross-repo integration: cellular/Wi-Fi/BLE paths, location, recording/relay, secure ownership, updates, factory reset/calibration retention, recovery and low power. Feature maturity is not inferred from README. Separate software project manages scope and iterations.
- 8.5: Work instructions for membrane cleanliness/bond/cure, grill/screen retention, torque, seals/pigtail/USB, ESD/rework and traceability; incoming/supplier quality, PFMEA/control plan, calibration, first-article approval and operator training. Golden unit and tooling/fixture backups retained.
- 8.6: Approved AVL, alternatives via ECO, allocation and forecast for radios/SIMs/antenna/resin/ePTFE/adhesive/cable/battery; no speculative full MP purchase. Pilot materials authorized; freight/customs/battery transport plan and supplier change notifications defined.
- 8.7: Released exact hardware/firmware/BOM/work instructions, calibrated validated test stations, material, required compliance evidence and trained operators. Approve proposed PVT lot and quality targets before build.
- 9.1: Suggested 100-unit lot uses intended staff, tools, resin/process and end-of-line tests. Record first-pass yield, defects/rework, cycle time, cavity/lot/serial traceability and process capability where sample size supports it; retain golden/reference units.
- 9.2: Pilot import, packaging, handling and shipment records verified; random receiving audit matches station records and serial/SIM identities.
- 9.3: Representative vehicles/installations and routes exercise cellular/GNSS/Wi-Fi/BLE, power/crank/sleep, heat/condensation, onboarding/OTA/recovery and optional approved NTN; retain logs with consent. Three weeks is a discovery pilot, not lifetime reliability proof.
- 9.4: Critical/major issues closed with retest and ECO impact assessment; baseline proposed targets >=95% first-pass yield, 100% functional screen pass before ship and zero unresolved critical defects require owner approval. Verify RMA/repair/OTA support and traceability.
- 9.5: Operator approves production quantity/PO against demand, cash, capacity and accepted quality. Qualified configuration and golden sample locked; change control, stop-ship and field monitoring owners assigned.
- 9.6: Size of first MP lot set at G8; control plan, sampling/audit, complete serialized test records, yield monitoring and supplier capacity demonstrated; hold nonconforming units.
- 9.7: Outgoing functional/visual/packaging audit and documentation pass, approved labels/manuals/certification configuration checked; ship only released units with traceability and support readiness.
- 9.8: First MP lot accepted and released for shipment; subsequent ramp managed by yield, demand and field performance. Freight to customer is outside this ready-to-ship milestone.
